# ProjetEcommerce

How a schedule from MS Project changed from version to version. A marks actual dates.

## Version 1 (saved 2014-10-27)

Note of the change: Project

| ID | WBS | Task | Duration | Start | Finish | Predecessors | Complete | Total float | Constraint |
| --- | --- | --- | --- | --- | --- | --- | --- | --- | --- |
| 1 | 1 | **Analyse** | 5.86d | 2014-09-15 09:00 | 2014-10-13 18:00 |  | 96% |  |  |
| 2 |  | Type de site (Enchere-Vente | 4h | 2014-09-18 09:00 A | 2014-09-18 13:00 A |  | 100% |  |  |
| 3 |  | Créer Github | 1h | 2014-09-22 09:00 A | 2014-09-22 10:00 A |  | 100% |  |  |
| 4 |  | Modèle base de donnée | 6h | 2014-09-22 09:00 A | 2014-09-25 11:00 A | 2 | 100% |  |  |
| 5 |  | SEO | 4h | 2014-09-25 11:00 A | 2014-10-02 10:00 A | 4 | 100% |  |  |
| 6 |  | Shéma navigation | 5h | 2014-09-25 11:00 A | 2014-09-29 12:00 | 4 | 75% | 2.43d |  |
| 7 |  | prototype HTML | 10h | 2014-09-29 12:00 A | 2014-10-09 10:00 A | 6 | 100% |  |  |
| 8 | 2 | **Développment** | 4.14d | 2014-10-27 09:00 A | 2014-11-13 18:00 |  | 4% |  |  |
| 9 |  | Créer base de donnée | 1h | 2014-10-27 09:00 A | 2014-10-27 10:00 A | 1 | 100% |  |  |
| 10 | 2.2 | **Layout du site** | 4.14d | 2014-10-27 09:00 | 2014-11-13 18:00 |  |  |  |  |
| 11 |  | Créer la master page | 4h | 2014-10-27 09:00 | 2014-10-27 13:00 | 1 |  | 1.86d |  |
| 12 |  | Page info acheteur | 1.5h | 2014-10-30 10:00 | 2014-10-30 11:30 | 11 |  | 2.5d |  |
| 13 |  | Page info compagnie | 1h | 2014-11-03 09:00 | 2014-11-03 10:00 | 11 |  | 12.14d | start no earlier than 2014-11-03 09:00 |
| 14 |  | Page du panier | 1.5h | 2014-11-03 09:00 | 2014-11-03 10:30 | 11 |  | 12.07d | start no earlier than 2014-11-03 09:00 |
| 15 |  | Page de confirmation d'achat | 1.5h | 2014-10-30 09:00 | 2014-10-30 10:30 | 11 |  | 2.64d |  |
| 16 |  | Page de suivit des commandes | 1.5h | 2014-10-30 09:00 | 2014-10-30 10:30 | 11 |  | 2.64d |  |
| 17 |  | Page de produits | 1h | 2014-11-03 10:30 | 2014-11-03 11:30 | 11 |  | 1.07d | start no earlier than 2014-11-03 09:00 |
| 18 |  | Page admin | 1h | 2014-10-30 09:00 | 2014-10-30 10:00 | 11 |  | 2.71d |  |
| 19 | 2.3 | **Développement du backend** | 3.57d | 2014-10-30 09:00 | 2014-11-13 18:00 |  |  |  |  |
| 20 |  | Inscription au site | 1h | 2014-11-03 09:00 | 2014-11-03 10:00 | 11 |  | 12.14d | start no earlier than 2014-11-03 09:00 |
| 21 |  | Modification info Acheteur | 1h | 2014-11-03 09:00 | 2014-11-03 10:00 | 12 |  | 12.14d | start no earlier than 2014-11-03 09:00 |
| 22 |  | Panier | 2h | 2014-11-03 11:30 | 2014-11-06 09:30 | 17 |  | 1.07d |  |
| 23 |  | Estimé livraison | 1.5h | 2014-11-06 09:30 | 2014-11-06 11:00 | 22 |  | 1.43d |  |
| 24 |  | Mode de paiement | 2h | 2014-11-06 09:30 | 2014-11-06 11:30 | 22 |  | 1.07d |  |
| 25 |  | Suivit de commandes | 2h | 2014-11-06 11:30 | 2014-11-10 09:30 | 24 |  | 1.07d |  |
| 26 |  | Interface Admin | 1h | 2014-11-06 09:00 | 2014-11-06 10:00 | 18 |  | 11.57d | start no earlier than 2014-11-06 09:00 |
| 27 | 3 | **BIDON** | 0.29d | 2015-01-15 09:00 | 2015-01-15 11:00 |  |  |  |  |
| 28 |  | Valider la sécurité | 2h | 2015-01-15 09:00 | 2015-01-15 11:00 |  |  | 0d |  |
| 29 |  | Envoyer un couriel | 2h | 2015-01-15 09:00 | 2015-01-15 11:00 |  |  | 0d |  |
| 30 |  | implémentation IIS | 2h | 2015-01-15 09:00 | 2015-01-15 11:00 |  |  | 0d |  |
| 31 |  | Plan de tests | 2h | 2015-01-15 09:00 | 2015-01-15 11:00 |  |  | 0d |  |

## Version 2 (saved 2014-11-06)

Note of the change: SearchBox!

Last finish stays 2015-01-15. Complete tasks 6 → 11.

Changed:

| ID | Task | Start | Finish | Complete | Total float |
| --- | --- | --- | --- | --- | --- |
| 8 | **Développment** |  |  | 4% → 57% |  |
| 10 | **Layout du site** | 2014-10-27 09:00 A |  | 0% → 47% |  |
| 11 | Créer la master page | 2014-10-27 09:00 A |  | 0% → 75% | 1.86d → 0.07d |
| 12 | Page info acheteur | 2014-10-30 10:00 A |  | 0% → 75% |  |
| 14 | Page du panier | 2014-11-03 09:00 A | 2014-11-03 10:30 A | 0% → 100% | 12.07d → none |
| 18 | Page admin | 2014-10-30 09:00 A |  | 0% → 50% | 2.71d → 1.11d |
| 19 | **Développement du backend** |  |  | 0% → 64% |  |
| 20 | Inscription au site | 2014-11-03 09:00 A | 2014-11-03 10:00 A | 0% → 100% | 12.14d → none |
| 21 | Modification info Acheteur | 2014-11-03 09:00 A | 2014-11-03 10:00 A | 0% → 100% | 12.14d → none |
| 22 | Panier | 2014-11-03 11:30 A | 2014-11-06 09:30 A | 0% → 100% | 1.07d → none |
| 24 | Mode de paiement | 2014-11-06 09:30 A | 2014-11-06 11:30 A | 0% → 100% | 1.07d → none |
| 26 | Interface Admin | 2014-11-06 09:00 A |  | 0% → 75% |  |

## Version 3 (saved 2014-11-09)

Note of the change: rename controller

Last finish stays 2015-01-15. Complete tasks 11 → 13.

Changed:

| ID | Task | Start | Finish | Complete | Total float |
| --- | --- | --- | --- | --- | --- |
| 8 | **Développment** |  |  | 57% → 62% |  |
| 10 | **Layout du site** |  |  | 47% → 55% |  |
| 17 | Page de produits | 2014-11-03 10:30 A | 2014-11-03 11:30 A | 0% → 100% | 1.07d → none |
| 19 | **Développement du backend** |  |  | 64% → 67% |  |
| 26 | Interface Admin |  | 2014-11-06 10:00 A | 75% → 100% | 11.57d → none |

## Version 4 (saved 2014-11-13)

Note of the change: Update Project

Last finish stays 2015-01-15. Complete tasks 13 → 14.

Changed:

| ID | Task | Finish | Duration | Complete | Total float |
| --- | --- | --- | --- | --- | --- |
| 8 | **Développment** |  |  | 62% → 68% |  |
| 10 | **Layout du site** |  |  | 55% → 66% |  |
| 15 | **Page de confirmation d'achat** |  | 1.5h → 0.21d |  |  |
| 18 | Page admin | 2014-10-30 10:00 A |  | 50% → 100% | 1.11d → none |
